Schedule from MS Project, 2021-03-01 to 2021-10-27, status date 2021-04-14, costs in р., A marks actual dates.
Microsoft
Команда разработчиков из 16 человек занимается созданием карты города на основе собственного модуля отображения. Проект должен быть завершен в течение 6 месяцев. Бюджет проекта: 50 000 рублей

## Calendars

- Стандартный: Mon-Fri 09:00-13:00, 14:00-18:00; Sat-Sun off. Exceptions (off unless hours are given): 2021-03-08 (Международный женский день), 2021-05-03 (Майские каникулы), 2021-05-09 to 2021-05-10 (День победы), 2021-06-12 to 2021-06-14 (День России).

## Resources

| Resource | Group | Unit | Rate | Cost per use |
| --- | --- | --- | --- | --- |
| Ведущий программист | Программирование |  | 10 | 100 |
| Программист#1 | Программирование |  | 7 | 50 |
| Программист#2 | Программирование |  | 7 | 50 |
| Программист#3 | Программирование |  | 7 | 50 |
| Программист#4 | Программирование |  | 7 | 50 |
| Системный аналитик | Анализ |  | 20 | 300 |
| Художник-дизайнер | Дизайн |  | 8 | 70 |
| Технический писатель | Документация |  | 5 | 20 |
| Web-дизайнер | Internet |  | 7 | 50 |
| 3D аниматор | Дизайн |  | 8 | 70 |
| Мультимедиа-корреспондент | М-медиа |  | 3 | 20 |
| Наборщик данных#1 | Ввод данных |  | 2 | 10 |
| Наборщик данных#2 | Ввод данных |  | 2 | 10 |
| Наборщик данных#3 | Ввод данных |  | 2 | 10 |
| Наборщик данных#4 | Ввод данных |  | 2 | 10 |
| Наборщик данных#5 | Ввод данных |  | 2 | 10 |
| Дополнительный сервер | Аренда |  | 2.2 |  |
| Распечатка презентации |  | шт |  |  |
| Проектор |  | шт | 500 |  |

## Schedule

| ID | WBS | Task | Type | Duration | Start | Finish | Predecessors | Complete | Remaining | Baseline start | Baseline finish | Baseline duration | Total slack | Free slack | Resources | Work | Actual work | Cost | Baseline cost | Actual cost |
| --- | --- | --- | --- | --- | --- | --- | --- | --- | --- | --- | --- | --- | --- | --- | --- | --- | --- | --- | --- | --- |
| 1 | 1 | Начало проекта | milestone | 0w | 2021-03-01 08:00 A | 2021-03-01 08:00 A |  | 100% |  | 2021-03-01 08:00 | 2021-03-01 08:00 | 0w |  |  |  |  |  |  |  |  |
| 2 | 2 | **Анализ** |  | 20.5d | 2021-03-09 10:00 A | 2021-04-06 15:00 A |  | 100% |  |  |  |  |  |  |  | 320h | 320h | 4,820 |  | 4,820 |
| 3 | 2.1 | Анализ и построение структуры базы объектов |  | 2w | 2021-03-23 12:00 A | 2021-04-06 15:00 A |  | 100% |  | 2021-03-23 14:00 | 2021-04-06 16:00 | 2w |  |  | Системный аналитик | 80h | 80h | 1,900 | 1,900 | 1,900 |
| 4 | 2.2 | Анализ и проектирование ядра |  | 1w | 2021-03-09 10:00 A | 2021-03-16 10:00 A |  | 100% |  | 2021-03-01 10:00 | 2021-03-09 11:00 | 1w |  |  | Ведущий программист; Системный аналитик; Программист#1; Программист#2; Программист#3; Программист#4 | 240h | 240h | 2,920 | 2,920 | 2,920 |
| 5 | 3 | **Разработка** |  | 35.5d | 2021-03-01 09:00 A | 2021-04-20 13:00 |  | 66% | 12.03d |  |  |  | 118.25d |  |  | 768h | 600h | 7,682.46 |  | 6,076.46 |
| 6 | 3.1 | Разработка 2D графических элементов |  | 3w | 2021-03-01 09:00 A | 2021-03-23 12:00 A |  | 100% |  | 2021-03-01 10:00 | 2021-03-23 13:00 | 3w |  |  | Художник-дизайнер | 120h | 120h | 1,030 | 1,030 | 1,030 |
| 7 | 3.2 | Разработка 3D графичиских элементов |  | 2w | 2021-03-08 08:00 A | 2021-03-23 12:00 A | 6SS | 100% |  | 2021-03-01 10:00 | 2021-03-16 12:00 | 2w |  |  | 3D аниматор | 80h | 80h | 710 | 710 | 710 |
| 8 | 3.3 | Разработка дизайна руководства |  | 1w | 2021-03-23 12:00 | 2021-03-30 13:00 |  |  |  | 2021-06-11 09:44 | 2021-06-21 14:44 | 1w | 100.72d | 0d | Художник-дизайнер | 40h |  | 390 | 390 |  |
| 9 | 3.4 | Разработка структуры сайта |  | 1d | 2021-03-25 12:00 | 2021-03-26 12:00 | 21SS |  |  | 2021-06-16 09:44 | 2021-06-17 09:44 | 1d | 100.72d | 0d | Web-дизайнер | 8h |  | 106 | 106 |  |
| 10 | 3.5 | Разработка дизайна сайта |  | 2.4w | 2021-03-26 12:00 | 2021-04-20 13:00 | 9 |  |  | 2021-06-17 09:44 | 2021-06-28 16:44 | 1.4w | 118.25d | 0d | 3D аниматор; Web-дизайнер; Художник-дизайнер | 120h |  | 1,110 | 1,110 |  |
| 11 | 3.6 | Создание модели ядра |  | 2.02w | 2021-03-09 10:00 A | 2021-03-23 10:49 A | 4 | 100% |  | 2021-03-09 11:00 | 2021-03-23 14:49 | 2.07w |  |  | Ведущий программист; Программист#1; Программист#2; Программист#3; Программист#4 | 400h | 400h | 4,336.46 | 3,336.46 | 4,336.46 |
| 12 | 4 | **Программирование** |  | 116.34d | 2021-03-01 09:00 A | 2021-08-16 11:42 |  | 28% | 83.3d |  |  |  | 52.41d |  |  | 2136h | 312h | 17,354.16 |  | 3,474 |
| 13 | 4.1 | Создание заставки |  | 3w | 2021-03-23 12:00 A | 2021-04-13 16:00 A | 7 | 100% |  | 2021-03-16 12:00 | 2021-04-06 16:00 | 3w |  |  | 3D аниматор | 120h | 120h | 1,030 | 1,030 | 1,030 |
| 14 | 4.2 | Программирование интерфейса |  | 3.02w | 2021-03-01 09:00 | 2021-08-16 11:42 |  |  |  | 2021-06-04 09:44 | 2021-06-28 09:44 | 3w | 42.41d | 0d | Программист#3; Программист#4 | 240h |  | 1,780 | 1,780 |  |
| 15 | 4.3 | Программирование средств обработки базы объектов |  | 3w | 2021-04-13 12:00 A | 2021-08-04 16:00 | 3 | 80% | 0.6w | 2021-04-06 16:00 | 2021-04-27 16:00 | 3w | 0d |  | Программист#3; Программист#4 | 576h | 192h | 5,132 | 1,780 | 2,244 |
| 16 | 4.4 | Создание рабочей версии ядра |  | 10w | 2021-04-06 09:00 A | 2021-08-16 10:55 | 24 |  | 10w | 2021-03-30 14:49 | 2021-06-04 09:44 | 9.1w | 52.51d | 67.51d | Ведущий программист; Программист#1; Программист#2; Программист#3; Программист#4 | 1200h |  | 9,412.16 | 9,412.16 | 200 |
| 17 | 5 | **Наполнение данных** |  | 151.38d | 2021-03-25 12:00 A | 2021-10-27 16:00 |  |  | 151.38d |  |  |  | 0d |  | Дополнительный сервер | 8148.01h |  | 14,083.6 |  | 20 |
| 18 | 5.1 | Наполнение базы объектов |  | 12w | 2021-08-04 16:00 | 2021-10-27 16:00 | 15 |  |  | 2021-04-27 16:00 | 2021-07-23 16:00 | 12w | 0d |  |  | 2400h |  |  | 4,850 |  |
| 19 | 5.2 | Создание справочной системы |  | 2w | 2021-08-16 11:42 | 2021-08-30 11:42 | 14 |  |  | 2021-07-12 10:00 | 2021-07-26 12:00 | 2w | 42.41d |  | Технический писатель | 80h |  | 420 | 420 |  |
| 20 | 5.3 | Создание мультимедиа - наполнения |  | 6w | 2021-04-13 16:00 A | 2021-05-28 15:00 |  |  | 6w | 2021-04-06 16:00 | 2021-05-21 13:00 | 6w | 107.13d |  | Мультимедиа-корреспондент | 240h |  | 740 | 740 | 20 |
| 21 | 5.4 | Написание руководства пользователя |  | 3w | 2021-03-25 12:00 | 2021-04-15 13:00 | 8SS+2d |  |  | 2021-06-16 09:44 | 2021-07-08 10:44 | 3w | 100.72d | 0d | Технический писатель | 120h |  | 620 | 620 |  |
| 22 | 5.5 | Наполнение сайта |  | 3w | 2021-04-20 14:00 | 2021-05-13 13:00 | 10 |  |  | 2021-06-28 16:44 | 2021-07-20 17:44 | 3w | 118.25d |  | Web-дизайнер | 120h |  | 890 | 890 |  |
| 23 | 6 | **Тестирование** |  | 54.66d | 2021-03-19 12:00 A | 2021-06-08 09:16 |  | 28% | 39.24d |  |  |  | 100.72d |  |  | 520h | 40h | 4,370 |  | 330 |
| 24 | 6.1 | Тестирование модели ядра |  | 1.95w | 2021-03-23 10:49 A | 2021-04-05 18:00 A | 11 | 100% |  | 2021-03-23 14:49 | 2021-03-30 14:49 | 1w |  |  | Программист#1 | 40h | 40h | 330 | 330 | 330 |
| 25 | 6.2 | Тестирование сайта |  | 4.97w | 2021-03-19 12:00 | 2021-06-08 09:16 | 9FS-1w |  |  | 2021-07-13 17:44 | 2021-08-02 10:23 | 2.59w | 100.72d | 0d | Ведущий программист; Программист#1; Программист#2 | 480h |  | 4,040 | 3,940.97 |  |
| 26 | 7 | Сдача сайта в эксплуатацию | milestone | 0w | 2021-06-08 09:16 | 2021-06-08 09:16 | 25 |  |  |  |  |  | 100.72d | 104.49d |  |  |  |  |  |  |

| ID | WBS | Task | Duration | Start | Finish | Complete | Remaining | Baseline start | Baseline finish | Baseline duration | Total slack | Constraint | Resources | Work | Actual work | Cost | Baseline cost | Actual cost |
| --- | --- | --- | --- | --- | --- | --- | --- | --- | --- | --- | --- | --- | --- | --- | --- | --- | --- | --- |
| 27 | 8 | **Совещание** | 96.12d | 2021-03-03 09:00 A | 2021-07-21 10:00 | 33% | 64.08d | 2021-03-01 09:00 | 2021-08-02 10:00 | 106.12d | 70.63d |  | Проектор [1 шт] | 80h | 40h | 1,120 | 1,403 | 505.55 |
| 28 | 8.1 | Совещание 1 | 1h | 2021-03-03 09:00 A | 2021-03-03 10:00 A | 100% |  | 2021-03-01 09:00 | 2021-03-01 10:00 | 1h |  | start no earlier than 2021-03-03 08:00 | 3D аниматор; Web-дизайнер; Ведущий программист; Мультимедиа-корреспондент; Системный аналитик; Технический писатель; Художник-дизайнер | 7h | 7h | 61 | 61 | 61 |
| 29 | 8.2 | Совещание 2 | 1h | 2021-03-10 09:00 A | 2021-03-10 10:00 A | 100% |  | 2021-03-09 09:00 | 2021-03-09 10:00 | 1h |  | start no earlier than 2021-03-10 08:00 | 3D аниматор; Web-дизайнер; Ведущий программист; Мультимедиа-корреспондент; Системный аналитик; Технический писатель; Художник-дизайнер | 7h | 7h | 61 | 61 | 61 |
| 30 | 8.3 | Совещание 3 | 1h | 2021-03-17 09:00 A | 2021-03-17 10:00 A | 100% |  | 2021-03-15 09:00 | 2021-03-15 10:00 | 1h |  | start no earlier than 2021-03-17 08:00 | 3D аниматор; Web-дизайнер; Ведущий программист; Мультимедиа-корреспондент; Системный аналитик; Технический писатель; Художник-дизайнер | 7h | 7h | 61 | 61 | 61 |
| 31 | 8.4 | Совещание 4 | 1h | 2021-03-24 09:00 A | 2021-03-24 10:00 A | 100% |  | 2021-03-22 09:00 | 2021-03-22 10:00 | 1h |  | start no earlier than 2021-03-24 08:00 | 3D аниматор; Web-дизайнер; Ведущий программист; Мультимедиа-корреспондент; Системный аналитик; Технический писатель; Художник-дизайнер | 7h | 7h | 61 | 61 | 61 |
| 32 | 8.5 | Совещание 5 | 1h | 2021-03-31 09:00 A | 2021-03-31 10:00 A | 100% |  | 2021-03-29 09:00 | 2021-03-29 10:00 | 1h |  | start no earlier than 2021-03-31 08:00 | 3D аниматор; Web-дизайнер; Ведущий программист; Мультимедиа-корреспондент; Системный аналитик; Технический писатель; Художник-дизайнер | 7h | 7h | 61 | 61 | 61 |
| 33 | 8.6 | Совещание 6 | 1h | 2021-04-07 08:00 A | 2021-04-07 10:00 | 99% | 0h | 2021-04-05 09:00 | 2021-04-05 10:00 | 1h | 142.63d | start no earlier than 2021-04-07 08:00 | 3D аниматор; Ведущий программист; Мультимедиа-корреспондент; Распечатка презентации [3 шт] | 3h | 3h | 21 | 61 | 21 |
| 34 | 8.7 | Совещание 7 | 1h | 2021-04-14 09:00 A | 2021-04-14 10:00 | 99% | 0h | 2021-04-12 09:00 | 2021-04-12 10:00 | 1h | 137.63d | start no earlier than 2021-04-14 08:00 | Ведущий программист; Мультимедиа-корреспондент; Распечатка презентации [2 шт] | 2h | 2h | 13 | 61 | 13 |
| 35 | 8.8 | Совещание 8 | 1h | 2021-04-21 09:00 | 2021-04-21 10:00 |  |  | 2021-04-19 09:00 | 2021-04-19 10:00 | 1h | 132.63d | start no earlier than 2021-04-21 08:00 | Ведущий программист; Мультимедиа-корреспондент; Распечатка презентации [2 шт] | 2h |  | 13 | 61 |  |
| 36 | 8.9 | Совещание 9 | 1h | 2021-04-28 09:00 | 2021-04-28 10:00 |  |  | 2021-04-26 09:00 | 2021-04-26 10:00 | 1h | 127.63d | start no earlier than 2021-04-28 08:00 | Ведущий программист; Мультимедиа-корреспондент; Распечатка презентации [2 шт] | 2h |  | 13 | 61 |  |
| 37 | 8.10 | Совещание 10 | 1h | 2021-05-05 09:00 | 2021-05-05 10:00 |  |  | 2021-05-04 09:00 | 2021-05-04 10:00 | 1h | 123.63d | start no earlier than 2021-05-05 08:00 | Ведущий программист; Мультимедиа-корреспондент; Распечатка презентации [2 шт] | 2h |  | 13 | 61 |  |
| 38 | 8.11 | Совещание 11 | 1h | 2021-05-12 09:00 | 2021-05-12 10:00 |  |  | 2021-05-11 09:00 | 2021-05-11 10:00 | 1h | 119.63d | start no earlier than 2021-05-12 08:00 | Ведущий программист; Мультимедиа-корреспондент; Распечатка презентации [2 шт] | 2h |  | 13 | 61 |  |
| 39 | 8.12 | Совещание 12 | 1h | 2021-05-19 09:00 | 2021-05-19 10:00 |  |  | 2021-05-17 09:00 | 2021-05-17 10:00 | 1h | 114.63d | start no earlier than 2021-05-19 08:00 | Ведущий программист; Мультимедиа-корреспондент; Распечатка презентации [2 шт] | 2h |  | 13 | 61 |  |
| 40 | 8.13 | Совещание 13 | 1h | 2021-05-26 09:00 | 2021-05-26 10:00 |  |  | 2021-05-24 09:00 | 2021-05-24 10:00 | 1h | 109.63d | start no earlier than 2021-05-26 08:00 | Ведущий программист; Мультимедиа-корреспондент; Распечатка презентации [2 шт] | 2h |  | 13 | 61 |  |
| 41 | 8.14 | Совещание 14 | 1h | 2021-06-02 09:00 | 2021-06-02 10:00 |  |  | 2021-05-31 09:00 | 2021-05-31 10:00 | 1h | 104.63d | start no earlier than 2021-06-02 08:00 | 3D аниматор; Web-дизайнер; Ведущий программист; Технический писатель; Художник-дизайнер; Распечатка презентации [5 шт] | 5h |  | 38 | 61 |  |
| 42 | 8.15 | Совещание 15 | 1h | 2021-06-09 09:00 | 2021-06-09 10:00 |  |  | 2021-06-07 09:00 | 2021-06-07 10:00 | 1h | 99.63d | start no earlier than 2021-06-09 08:00 | 3D аниматор; Web-дизайнер; Технический писатель; Художник-дизайнер; Распечатка презентации [4 шт] | 4h |  | 28 | 61 |  |
| 43 | 8.16 | Совещание 16 | 1h | 2021-06-16 09:00 | 2021-06-16 10:00 |  |  | 2021-06-15 09:00 | 2021-06-15 10:00 | 1h | 95.63d | start no earlier than 2021-06-16 08:00 | 3D аниматор; Web-дизайнер; Технический писатель; Художник-дизайнер; Распечатка презентации [4 шт] | 4h |  | 28 | 61 |  |
| 44 | 8.17 | Совещание 17 | 1h | 2021-06-23 09:00 | 2021-06-23 10:00 |  |  | 2021-06-21 09:00 | 2021-06-21 10:00 | 1h | 90.63d | start no earlier than 2021-06-23 08:00 | 3D аниматор; Web-дизайнер; Технический писатель; Художник-дизайнер; Распечатка презентации [4 шт] | 4h |  | 28 | 61 |  |
| 45 | 8.18 | Совещание 18 | 1h | 2021-06-30 09:00 | 2021-06-30 10:00 |  |  | 2021-06-28 09:00 | 2021-06-28 10:00 | 1h | 85.63d | start no earlier than 2021-06-30 08:00 | Web-дизайнер; Ведущий программист; Технический писатель; Распечатка презентации [3 шт] | 3h |  | 22 | 61 |  |
| 46 | 8.19 | Совещание 19 | 1h | 2021-07-07 09:00 | 2021-07-07 10:00 |  |  | 2021-07-05 09:00 | 2021-07-05 10:00 | 1h | 80.63d | start no earlier than 2021-07-07 08:00 | Web-дизайнер; Ведущий программист; Технический писатель; Распечатка презентации [3 шт] | 3h |  | 22 | 61 |  |
| 47 | 8.20 | Совещание 20 | 1h | 2021-07-14 09:00 | 2021-07-14 10:00 |  |  | 2021-07-12 09:00 | 2021-07-12 10:00 | 1h | 75.63d | start no earlier than 2021-07-14 08:00 | Web-дизайнер; Ведущий программист; Технический писатель; Распечатка презентации [3 шт] | 3h |  | 22 | 61 |  |
| 48 | 8.21 | Совещание 21 | 1h | 2021-07-21 09:00 | 2021-07-21 10:00 |  |  | 2021-07-19 09:00 | 2021-07-19 10:00 | 1h | 70.63d | start no earlier than 2021-07-21 08:00 | Ведущий программист; Технический писатель; Распечатка презентации [2 шт] | 2h |  | 15 | 61 |  |
