Schedule from MS Project, 2021-03-01 to 2021-08-26, status date 2021-04-14, costs in р., A marks actual dates.
Microsoft
Команда разработчиков из 16 человек занимается созданием карты города на основе собственного модуля отображения. Проект должен быть завершен в течение 6 месяцев. Бюджет проекта: 50 000 рублей

## Calendars

- Стандартный: Mon-Fri 09:00-13:00, 14:00-18:00; Sat-Sun off. Exceptions (off unless hours are given): 2021-03-08 (Международный женский день), 2021-05-03 (Майские каникулы), 2021-05-09 to 2021-05-10 (День победы), 2021-06-12 to 2021-06-14 (День России).

## Resources

| Resource | Group | Unit | Rate | Cost per use |
| --- | --- | --- | --- | --- |
| Ведущий программист | Программирование |  | 10 | 100 |
| Программист#1 | Программирование |  | 7 | 50 |
| Программист#2 | Программирование |  | 7 | 50 |
| Программист#3 | Программирование |  | 7 | 50 |
| Программист#4 | Программирование |  | 7 | 50 |
| Системный аналитик | Анализ |  | 20 | 300 |
| Художник-дизайнер | Дизайн |  | 8 | 70 |
| Технический писатель | Документация |  | 5 | 20 |
| Web-дизайнер | Internet |  | 7 | 50 |
| 3D аниматор | Дизайн |  | 8 | 70 |
| Мультимедиа-корреспондент | М-медиа |  | 3 | 20 |
| Наборщик данных#1 | Ввод данных |  | 2 | 10 |
| Наборщик данных#2 | Ввод данных |  | 2 | 10 |
| Наборщик данных#3 | Ввод данных |  | 2 | 10 |
| Наборщик данных#4 | Ввод данных |  | 2 | 10 |
| Наборщик данных#5 | Ввод данных |  | 2 | 10 |
| Дополнительный сервер | Аренда |  | 2.2 |  |
| Распечатка презентации |  | шт |  |  |
| Проектор |  | шт | 500 |  |
| Наборщик данны#6 | Ввод данных |  | 2 | 10 |

## Schedule

| ID | WBS | Task | Type | Duration | Start | Finish | Predecessors | Complete | Remaining | Baseline start | Baseline finish | Baseline duration | Total slack | Free slack | Resources | Work | Actual work | Cost | Baseline cost | Actual cost |
| --- | --- | --- | --- | --- | --- | --- | --- | --- | --- | --- | --- | --- | --- | --- | --- | --- | --- | --- | --- | --- |
| 1 | 1 | Начало проекта | milestone | 0w | 2021-03-01 08:00 A | 2021-03-01 08:00 A |  | 100% |  | 2021-03-01 08:00 | 2021-03-01 08:00 | 0w |  |  |  |  |  |  |  |  |
| 2 | 2 | **Анализ** |  | 20.5d | 2021-03-09 10:00 A | 2021-04-06 15:00 A |  | 100% |  |  |  |  |  |  |  | 320h | 320h | 4,820 |  | 4,820 |
| 3 | 2.1 | Анализ и построение структуры базы объектов |  | 2w | 2021-03-23 12:00 A | 2021-04-06 15:00 A |  | 100% |  | 2021-03-23 14:00 | 2021-04-06 16:00 | 2w |  |  | Системный аналитик | 80h | 80h | 1,900 | 1,900 | 1,900 |
| 4 | 2.2 | Анализ и проектирование ядра |  | 1w | 2021-03-09 10:00 A | 2021-03-16 10:00 A |  | 100% |  | 2021-03-01 10:00 | 2021-03-09 11:00 | 1w |  |  | Ведущий программист; Системный аналитик; Программист#1; Программист#2; Программист#3; Программист#4 | 240h | 240h | 2,920 | 2,920 | 2,920 |
| 5 | 3 | **Разработка** |  | 35.5d | 2021-03-01 09:00 A | 2021-04-20 13:00 |  | 93% | 2.34d |  |  |  | 74.5d |  |  | 768h | 740h | 6,682.46 |  | 6,458.46 |
| 6 | 3.1 | Разработка 2D графических элементов |  | 3w | 2021-03-01 09:00 A | 2021-03-23 12:00 A |  | 100% |  | 2021-03-01 10:00 | 2021-03-23 13:00 | 3w |  |  | Художник-дизайнер | 120h | 120h | 1,030 | 1,030 | 1,030 |
| 7 | 3.2 | Разработка 3D графичиских элементов |  | 2w | 2021-03-08 08:00 A | 2021-03-23 12:00 A | 6SS | 100% |  | 2021-03-01 10:00 | 2021-03-16 12:00 | 2w |  |  | 3D аниматор | 80h | 80h | 710 | 710 | 710 |
| 8 | 3.3 | Разработка дизайна руководства |  | 1w | 2021-03-23 12:00 A | 2021-03-30 13:00 A |  | 100% |  | 2021-06-11 09:44 | 2021-06-21 14:44 | 1w |  |  | Художник-дизайнер | 40h | 40h | 390 | 390 | 390 |
| 9 | 3.4 | Разработка структуры сайта |  | 1d | 2021-03-25 12:00 A | 2021-03-26 12:00 A | 21SS | 100% |  | 2021-06-16 09:44 | 2021-06-17 09:44 | 1d |  |  | Web-дизайнер | 8h | 8h | 106 | 106 | 106 |
| 10 | 3.5 | Разработка дизайна сайта |  | 2.4w | 2021-03-26 12:00 A | 2021-04-20 13:00 | 9 | 71% | 0.7w | 2021-06-17 09:44 | 2021-06-28 16:44 | 1.4w | 74.5d | 0d | 3D аниматор; Web-дизайнер; Художник-дизайнер | 120h | 92h | 1,110 | 1,110 | 886 |
| 11 | 3.6 | Создание модели ядра |  | 2.02w | 2021-03-09 10:00 A | 2021-03-23 10:49 A | 4 | 100% |  | 2021-03-09 11:00 | 2021-03-23 14:49 | 2.07w |  |  | Ведущий программист; Программист#1; Программист#2; Программист#3; Программист#4 | 400h | 400h | 3,336.46 | 3,336.46 | 3,336.46 |
| 12 | 4 | **Программирование** |  | 75.11d | 2021-03-01 09:00 A | 2021-06-18 09:55 |  | 62% | 28.58d |  |  |  | 49.89d |  |  | 2328h | 1380h | 17,988.16 |  | 10,802.01 |
| 13 | 4.1 | Создание заставки |  | 3w | 2021-03-23 12:00 A | 2021-04-13 16:00 A | 7 | 100% |  | 2021-03-16 12:00 | 2021-04-06 16:00 | 3w |  |  | 3D аниматор | 120h | 120h | 1,030 | 1,030 | 1,030 |
| 14 | 4.2 | Программирование интерфейса |  | 1.76w | 2021-03-01 09:00 A | 2021-03-30 09:10 A |  | 100% |  | 2021-06-04 09:44 | 2021-06-28 09:44 | 3w |  |  | Программист#4; Программист#1; Программист#2; Программист#3 | 240h | 240h | 1,880 | 1,780 | 1,880 |
| 15 | 4.3 | Программирование средств обработки базы объектов |  | 3w | 2021-04-13 12:00 A | 2021-06-17 18:00 A | 3 | 100% |  | 2021-04-06 16:00 | 2021-04-27 16:00 | 3w |  |  | Программист#4; Программист#1 [160%]; Программист#2 [160%]; Программист#3 [160%] | 768h | 768h | 5,666 | 1,780 | 5,666 |
| 16 | 4.4 | Создание рабочей версии ядра |  | 7.02w | 2021-04-06 09:00 A | 2021-06-18 09:55 | 24 | 20% | 5.62w | 2021-03-30 14:49 | 2021-06-04 09:44 | 9.1w | 49.89d |  | Ведущий программист; Программист#1; Программист#2; Программист#3; Программист#4 | 1200h | 252h | 9,412.16 | 9,412.16 | 2,226.01 |
| 17 | 5 | **Наполнение данных** |  | 107.62d | 2021-03-25 12:00 A | 2021-08-26 18:00 |  | 13% | 93.61d |  |  |  | 0d |  | Дополнительный сервер | 6662h | 610.34h | 15,674.4 |  | 1,714.74 |
| 18 | 5.1 | Наполнение базы объектов |  | 10w | 2021-06-18 09:00 | 2021-08-26 18:00 | 15 |  |  | 2021-04-27 16:00 | 2021-07-23 16:00 | 12w | 0d |  | Наборщик данны#6; Наборщик данных#1; Наборщик данных#2; Наборщик данных#3; Наборщик данных#4; Наборщик данных#5 | 2400h |  | 4,860 | 4,850 |  |
| 19 | 5.2 | Создание справочной системы |  | 2w | 2021-04-16 11:54 | 2021-04-30 11:54 | 14 |  |  | 2021-07-12 10:00 | 2021-07-26 12:00 | 2w | 91.64d |  | Технический писатель | 80h |  | 420 | 420 |  |
| 20 | 5.3 | Создание мультимедиа - наполнения |  | 6w | 2021-04-13 16:00 A | 2021-05-28 15:00 |  | 4% | 5.78w | 2021-04-06 16:00 | 2021-05-21 13:00 | 6w | 63.38d |  | Мультимедиа-корреспондент | 240h | 9h | 740 | 740 | 47 |
| 21 | 5.4 | Написание руководства пользователя |  | 3w | 2021-03-25 12:00 A | 2021-04-15 13:00 | 8SS+2d | 97% | 0.1w | 2021-06-16 09:44 | 2021-07-08 10:44 | 3w | 92.5d |  | Технический писатель | 120h | 116h | 620 | 620 | 600 |
| 22 | 5.5 | Наполнение сайта |  | 3w | 2021-04-20 14:00 | 2021-05-13 13:00 | 10 |  |  | 2021-06-28 16:44 | 2021-07-20 17:44 | 3w | 84.5d |  | Web-дизайнер | 120h |  | 890 | 890 |  |
| 23 | 6 | **Тестирование** |  | 64.26d | 2021-03-23 09:00 A | 2021-06-24 11:06 |  | 63% | 23.86d |  |  |  | 45.74d |  |  | 520h | 339.09h | 4,278 |  | 2,952.19 |
| 24 | 6.1 | Тестирование модели ядра |  | 1.95w | 2021-03-23 10:49 A | 2021-04-05 18:00 A | 11 | 100% |  | 2021-03-23 14:49 | 2021-03-30 14:49 | 1w |  |  | Программист#1 | 40h | 40h | 330 | 330 | 330 |
| 25 | 6.2 | Тестирование сайта |  | 4.81w | 2021-03-23 09:00 A | 2021-06-24 11:06 | 9FS-1w | 48% | 2.51w | 2021-07-13 17:44 | 2021-08-02 10:23 | 2.59w | 45.74d |  | Программист#1; Программист#2; Ведущий программист; Программист#3; Программист#4 | 480h | 299.09h | 3,948 | 3,940.97 | 2,622.19 |
| 26 | 7 | Сдача сайта в эксплуатацию | milestone | 0w | 2021-08-26 18:00 | 2021-08-26 18:00 | 17, 25 |  |  |  |  |  | 0d |  |  |  |  |  |  |  |

| ID | WBS | Task | Duration | Start | Finish | Complete | Remaining | Baseline start | Baseline finish | Baseline duration | Total slack | Constraint | Resources | Work | Actual work | Cost | Baseline cost | Actual cost |
| --- | --- | --- | --- | --- | --- | --- | --- | --- | --- | --- | --- | --- | --- | --- | --- | --- | --- | --- |
| 27 | 8 | **Совещание** | 96.12d | 2021-03-03 09:00 A | 2021-07-21 10:00 | 33% | 64.08d | 2021-03-01 09:00 | 2021-08-02 10:00 | 106.12d | 26.88d |  | Проектор [1 шт] | 80h | 40h | 1,120 | 1,403 | 505.55 |
| 28 | 8.1 | Совещание 1 | 1h | 2021-03-03 09:00 A | 2021-03-03 10:00 A | 100% |  | 2021-03-01 09:00 | 2021-03-01 10:00 | 1h |  | start no earlier than 2021-03-03 08:00 | 3D аниматор; Web-дизайнер; Ведущий программист; Мультимедиа-корреспондент; Системный аналитик; Технический писатель; Художник-дизайнер | 7h | 7h | 61 | 61 | 61 |
| 29 | 8.2 | Совещание 2 | 1h | 2021-03-10 09:00 A | 2021-03-10 10:00 A | 100% |  | 2021-03-09 09:00 | 2021-03-09 10:00 | 1h |  | start no earlier than 2021-03-10 08:00 | 3D аниматор; Web-дизайнер; Ведущий программист; Мультимедиа-корреспондент; Системный аналитик; Технический писатель; Художник-дизайнер | 7h | 7h | 61 | 61 | 61 |
| 30 | 8.3 | Совещание 3 | 1h | 2021-03-17 09:00 A | 2021-03-17 10:00 A | 100% |  | 2021-03-15 09:00 | 2021-03-15 10:00 | 1h |  | start no earlier than 2021-03-17 08:00 | 3D аниматор; Web-дизайнер; Ведущий программист; Мультимедиа-корреспондент; Системный аналитик; Технический писатель; Художник-дизайнер | 7h | 7h | 61 | 61 | 61 |
| 31 | 8.4 | Совещание 4 | 1h | 2021-03-24 09:00 A | 2021-03-24 10:00 A | 100% |  | 2021-03-22 09:00 | 2021-03-22 10:00 | 1h |  | start no earlier than 2021-03-24 08:00 | 3D аниматор; Web-дизайнер; Ведущий программист; Мультимедиа-корреспондент; Системный аналитик; Технический писатель; Художник-дизайнер | 7h | 7h | 61 | 61 | 61 |
| 32 | 8.5 | Совещание 5 | 1h | 2021-03-31 09:00 A | 2021-03-31 10:00 A | 100% |  | 2021-03-29 09:00 | 2021-03-29 10:00 | 1h |  | start no earlier than 2021-03-31 08:00 | 3D аниматор; Web-дизайнер; Ведущий программист; Мультимедиа-корреспондент; Системный аналитик; Технический писатель; Художник-дизайнер | 7h | 7h | 61 | 61 | 61 |
| 33 | 8.6 | Совещание 6 | 1h | 2021-04-07 08:00 A | 2021-04-07 10:00 A | 100% |  | 2021-04-05 09:00 | 2021-04-05 10:00 | 1h |  | start no earlier than 2021-04-07 08:00 | 3D аниматор; Ведущий программист; Мультимедиа-корреспондент; Распечатка презентации [3 шт] | 3h | 3h | 21 | 61 | 21 |
| 34 | 8.7 | Совещание 7 | 1h | 2021-04-14 09:00 A | 2021-04-14 10:00 A | 100% |  | 2021-04-12 09:00 | 2021-04-12 10:00 | 1h |  | start no earlier than 2021-04-14 08:00 | Ведущий программист; Мультимедиа-корреспондент; Распечатка презентации [2 шт] | 2h | 2h | 13 | 61 | 13 |
| 35 | 8.8 | Совещание 8 | 1h | 2021-04-21 09:00 | 2021-04-21 10:00 |  |  | 2021-04-19 09:00 | 2021-04-19 10:00 | 1h | 98.88d | start no earlier than 2021-04-21 08:00 | Ведущий программист; Мультимедиа-корреспондент; Распечатка презентации [2 шт] | 2h |  | 13 | 61 |  |
| 36 | 8.9 | Совещание 9 | 1h | 2021-04-28 09:00 | 2021-04-28 10:00 |  |  | 2021-04-26 09:00 | 2021-04-26 10:00 | 1h | 93.88d | start no earlier than 2021-04-28 08:00 | Ведущий программист; Мультимедиа-корреспондент; Распечатка презентации [2 шт] | 2h |  | 13 | 61 |  |
| 37 | 8.10 | Совещание 10 | 1h | 2021-05-05 09:00 | 2021-05-05 10:00 |  |  | 2021-05-04 09:00 | 2021-05-04 10:00 | 1h | 89.88d | start no earlier than 2021-05-05 08:00 | Ведущий программист; Мультимедиа-корреспондент; Распечатка презентации [2 шт] | 2h |  | 13 | 61 |  |
| 38 | 8.11 | Совещание 11 | 1h | 2021-05-12 09:00 | 2021-05-12 10:00 |  |  | 2021-05-11 09:00 | 2021-05-11 10:00 | 1h | 85.88d | start no earlier than 2021-05-12 08:00 | Ведущий программист; Мультимедиа-корреспондент; Распечатка презентации [2 шт] | 2h |  | 13 | 61 |  |
| 39 | 8.12 | Совещание 12 | 1h | 2021-05-19 09:00 | 2021-05-19 10:00 |  |  | 2021-05-17 09:00 | 2021-05-17 10:00 | 1h | 80.88d | start no earlier than 2021-05-19 08:00 | Ведущий программист; Мультимедиа-корреспондент; Распечатка презентации [2 шт] | 2h |  | 13 | 61 |  |
| 40 | 8.13 | Совещание 13 | 1h | 2021-05-26 09:00 | 2021-05-26 10:00 |  |  | 2021-05-24 09:00 | 2021-05-24 10:00 | 1h | 75.88d | start no earlier than 2021-05-26 08:00 | Ведущий программист; Мультимедиа-корреспондент; Распечатка презентации [2 шт] | 2h |  | 13 | 61 |  |
| 41 | 8.14 | Совещание 14 | 1h | 2021-06-02 09:00 | 2021-06-02 10:00 |  |  | 2021-05-31 09:00 | 2021-05-31 10:00 | 1h | 70.88d | start no earlier than 2021-06-02 08:00 | 3D аниматор; Web-дизайнер; Ведущий программист; Технический писатель; Художник-дизайнер; Распечатка презентации [5 шт] | 5h |  | 38 | 61 |  |
| 42 | 8.15 | Совещание 15 | 1h | 2021-06-09 09:00 | 2021-06-09 10:00 |  |  | 2021-06-07 09:00 | 2021-06-07 10:00 | 1h | 65.88d | start no earlier than 2021-06-09 08:00 | 3D аниматор; Web-дизайнер; Технический писатель; Художник-дизайнер; Распечатка презентации [4 шт] | 4h |  | 28 | 61 |  |
| 43 | 8.16 | Совещание 16 | 1h | 2021-06-16 09:00 | 2021-06-16 10:00 |  |  | 2021-06-15 09:00 | 2021-06-15 10:00 | 1h | 61.88d | start no earlier than 2021-06-16 08:00 | 3D аниматор; Web-дизайнер; Технический писатель; Художник-дизайнер; Распечатка презентации [4 шт] | 4h |  | 28 | 61 |  |
| 44 | 8.17 | Совещание 17 | 1h | 2021-06-23 09:00 | 2021-06-23 10:00 |  |  | 2021-06-21 09:00 | 2021-06-21 10:00 | 1h | 56.88d | start no earlier than 2021-06-23 08:00 | 3D аниматор; Web-дизайнер; Технический писатель; Художник-дизайнер; Распечатка презентации [4 шт] | 4h |  | 28 | 61 |  |
| 45 | 8.18 | Совещание 18 | 1h | 2021-06-30 09:00 | 2021-06-30 10:00 |  |  | 2021-06-28 09:00 | 2021-06-28 10:00 | 1h | 51.88d | start no earlier than 2021-06-30 08:00 | Web-дизайнер; Ведущий программист; Технический писатель; Распечатка презентации [3 шт] | 3h |  | 22 | 61 |  |
| 46 | 8.19 | Совещание 19 | 1h | 2021-07-07 09:00 | 2021-07-07 10:00 |  |  | 2021-07-05 09:00 | 2021-07-05 10:00 | 1h | 46.88d | start no earlier than 2021-07-07 08:00 | Web-дизайнер; Ведущий программист; Технический писатель; Распечатка презентации [3 шт] | 3h |  | 22 | 61 |  |
| 47 | 8.20 | Совещание 20 | 1h | 2021-07-14 09:00 | 2021-07-14 10:00 |  |  | 2021-07-12 09:00 | 2021-07-12 10:00 | 1h | 41.88d | start no earlier than 2021-07-14 08:00 | Web-дизайнер; Ведущий программист; Технический писатель; Распечатка презентации [3 шт] | 3h |  | 22 | 61 |  |
| 48 | 8.21 | Совещание 21 | 1h | 2021-07-21 09:00 | 2021-07-21 10:00 |  |  | 2021-07-19 09:00 | 2021-07-19 10:00 | 1h | 36.88d | start no earlier than 2021-07-21 08:00 | Ведущий программист; Технический писатель; Распечатка презентации [2 шт] | 2h |  | 15 | 61 |  |
