Schedule from MS Project, 2021-03-01 to 2021-07-21, status date 2021-04-30, costs in р., A marks actual dates.
Microsoft
Команда разработчиков из 16 человек занимается созданием карты города на основе собственного модуля отображения. Проект должен быть завершен в течение 6 месяцев. Бюджет проекта: 50 000 рублей

## Calendars

- Стандартный: Mon-Fri 09:00-13:00, 14:00-18:00; Sat-Sun off. Exceptions (off unless hours are given): 2021-03-08 (Международный женский день), 2021-05-03 (Майские каникулы), 2021-05-09 to 2021-05-10 (День победы), 2021-06-12 to 2021-06-14 (День России).

## Resources

| Resource | Group | Rate | Cost per use |
| --- | --- | --- | --- |
| Ведущий программист | Программирование | 10 | 100 |
| Программист#1 | Программирование | 7 | 50 |
| Программист#2 | Программирование | 7 | 50 |
| Программист#3 | Программирование | 7 | 50 |
| Программист#4 | Программирование | 7 | 50 |
| Системный аналитик | Анализ | 20 | 300 |
| Художник-дизайнер | Дизайн | 8 | 70 |
| Технический писатель | Документация | 5 | 20 |
| Web-дизайнер | Internet | 7 | 50 |
| 3D аниматор | Дизайн | 8 | 70 |
| Мультимедиа-корреспондент | М-медиа | 3 | 20 |
| Наборщик данных#1 | Ввод данных | 2 | 10 |
| Наборщик данных#2 | Ввод данных | 2 | 10 |
| Наборщик данных#3 | Ввод данных | 2 | 10 |
| Наборщик данных#4 | Ввод данных | 2 | 10 |
| Наборщик данных#5 | Ввод данных | 2 | 10 |
| Дополнительный сервер | Аренда | 2 |  |
| ПО для дизайна | Дизайн |  |  |
| Наборщик данных#6 | Ввод данных | 2 | 10 |

## Schedule

| ID | WBS | Task | Type | Duration | Start | Finish | Predecessors | Complete | Remaining | Baseline start | Baseline finish | Baseline duration | Total slack | Free slack | Resources | Work | Actual work | Cost | Baseline cost | Actual cost |
| --- | --- | --- | --- | --- | --- | --- | --- | --- | --- | --- | --- | --- | --- | --- | --- | --- | --- | --- | --- | --- |
| 1 | 1 | Начало проекта | milestone | 0w | 2021-03-01 08:00 A | 2021-03-01 08:00 A |  | 100% |  | 2021-03-01 08:00 | 2021-03-01 08:00 | 0w |  |  |  |  |  |  |  |  |
| 2 | 2 | **Создание интерфейса** |  | 74.14d | 2021-03-01 09:00 A | 2021-06-17 10:05 | 1 | 85% | 10.8d | 2021-03-01 09:00 | 2021-06-08 11:55 | 68.36d | 0d |  |  | 560h | 320h | 6,850 | 5,650 | 4,820 |
| 3 | 2.1 | **Разработка дизайна интерфейса** |  | 28.88d | 2021-03-01 09:00 A | 2021-04-09 17:00 A |  | 100% |  | 2021-03-01 09:00 | 2021-04-06 15:00 | 25.62d |  |  | ПО для дизайна [0.1%] | 320h | 320h | 3,970 | 2,770 | 3,970 |
| 4 | 2.1.1 | Разработка 2D графических элементов |  | 3.3w | 2021-03-01 09:00 A | 2021-03-25 12:00 A |  | 100% |  | 2021-03-01 09:00 | 2021-03-23 12:00 | 3w |  |  | Художник-дизайнер | 120h | 120h | 1,030 | 1,030 | 1,030 |
| 5 | 2.1.2 | Разработка 3D графичиских элементов |  | 2.2w | 2021-03-01 09:00 A | 2021-03-17 15:00 A | 4SS | 100% |  | 2021-03-01 09:00 | 2021-03-16 11:00 | 2w |  |  | 3D аниматор | 80h | 80h | 710 | 710 | 710 |
| 6 | 2.1.3 | Создание заставки |  | 3.3w | 2021-03-17 15:00 A | 2021-04-09 17:00 A | 5 | 100% |  | 2021-03-16 11:00 | 2021-04-06 15:00 | 3w |  |  | 3D аниматор | 120h | 120h | 1,030 | 1,030 | 1,030 |
| 7 | 2.2 | Программирование интерфейса |  | 1.5w | 2021-06-04 15:05 | 2021-06-17 10:05 | 3, 12 |  |  | 2021-05-27 16:55 | 2021-06-08 11:55 | 1.5w | 0d |  | Программист#3; Программист#4; Программист#1; Программист#2 | 240h |  | 1,880 | 1,880 |  |
| 8 | 3 | **Построение базы объектов** |  | 86.3d | 2021-03-09 10:00 A | 2021-07-12 12:24 |  | 40% | 52.11d | 2021-03-09 10:00 | 2021-07-09 12:00 | 85.25d | 7.29d |  | Дополнительный сервер | 5722.41h | 1464.36h | 15,763.65 | 15,390 | 6,068.72 |
| 9 | 3.1 | Анализ и построение структуры базы объектов |  | 2w | 2021-03-09 10:00 A | 2021-03-23 12:00 A |  | 100% |  | 2021-03-09 10:00 | 2021-03-23 12:00 | 2w |  |  | Системный аналитик | 80h | 80h | 1,900 | 1,900 | 1,900 |
| 10 | 3.2 | Программирование средств обработки базы объектов |  | 3w | 2021-03-23 12:00 A | 2021-04-13 12:00 | 9 | 70% | 0.9w | 2021-03-23 12:00 | 2021-04-13 12:00 | 3w | 13.62d | 0d | Программист#3; Программист#4 | 240h | 168h | 1,780 | 1,780 | 1,276 |
| 11 | 3.3 | Наполнение базы объектов |  | 12.22w | 2021-04-13 12:00 A | 2021-07-12 12:24 | 10 | 22% | 9.5w | 2021-04-13 12:00 | 2021-07-09 12:00 | 12w | 7.29d |  | Наборщик данных#1; Наборщик данных#2; Наборщик данных#3; Наборщик данных#4; Наборщик данных#5; Наборщик данных#6 | 2400h | 513h | 4,860 | 4,850 | 1,086 |
| 12 | 4 | **Создание ядра GIS** |  | 66.64d | 2021-03-01 09:00 A | 2021-06-04 15:05 |  | 66% | 22.64d | 2021-03-01 09:00 | 2021-05-27 16:55 | 60.86d | 0d |  |  | 1843h | 1146.73h | 16,829.01 | 16,998.62 | 11,025.92 |
| 13 | 4.1 | Анализ и проектирование ядра |  | 1.02w | 2021-03-01 09:00 A | 2021-03-09 10:00 A |  | 100% |  | 2021-03-01 09:00 | 2021-03-09 10:00 | 1.02w |  |  | Ведущий программист; Системный аналитик; Программист#1; Программист#2; Программист#3; Программист#4 | 240h | 240h | 2,920 | 2,920 | 2,920 |
| 14 | 4.2 | Создание модели ядра |  | 2.02w | 2021-03-09 10:00 A | 2021-03-23 10:49 A | 13 | 100% |  | 2021-03-09 10:00 | 2021-03-23 10:49 | 2.02w |  |  | Ведущий программист; Программист#1; Программист#2; Программист#3; Программист#4 | 400h | 400h | 3,336.46 | 3,336.46 | 3,336.46 |
| 15 | 4.3 | Тестирование модели ядра |  | 2.15w | 2021-03-23 10:49 A | 2021-04-06 18:00 A | 14 | 100% |  | 2021-03-23 10:49 | 2021-03-30 10:49 | 1w |  |  | Программист#1 | 40h | 40h | 330 | 330 | 330 |
| 16 | 4.4 | Создание рабочей версии ядра |  | 8.13w | 2021-04-07 09:00 A | 2021-06-04 15:05 | 15 | 44% | 4.53w | 2021-03-30 10:49 | 2021-05-27 16:55 | 8.13w | 0d |  | Ведущий программист; Программист#1; Программист#2; Программист#3; Программист#4 | 1163h | 466.73h | 9,242.55 | 9,412.16 | 3,779.46 |
| 17 | 5 | Создание мультимедиа - наполнения |  | 6w | 2021-04-09 17:00 A | 2021-05-27 15:00 | 3 | 48% | 3.12w | 2021-04-06 15:00 | 2021-05-21 13:00 | 6w | 38.09d |  | Мультимедиа-корреспондент | 240h | 115h | 740 | 740 | 365 |
| 18 | 6 | Создание справочной системы |  | 2w | 2021-06-30 10:00 | 2021-07-15 09:55 | 7 |  |  | 2021-06-21 10:55 | 2021-07-06 09:50 | 2w | 4.61d |  | Технический писатель | 80h |  | 420 | 420 |  |
| 19 | 7 | **Создание руководства пользователя** |  | 18.25d | 2021-06-02 10:05 | 2021-06-29 12:05 | 7FS-10d |  |  | 2021-05-25 11:55 | 2021-06-21 10:55 | 17.88d | 0d |  |  | 160h |  | 1,010 | 1,010 |  |
| 20 | 7.1 | Разработка дизайна руководства |  | 1w | 2021-06-02 10:05 | 2021-06-09 14:05 |  |  |  | 2021-05-25 11:55 | 2021-06-01 14:55 | 1w | 0d |  | Художник-дизайнер | 40h |  | 390 | 390 |  |
| 21 | 7.2 | Написание руководства пользователя |  | 3w | 2021-06-04 10:05 | 2021-06-29 12:05 | 20SS+2d |  |  | 2021-05-27 11:55 | 2021-06-21 10:55 | 3w | 0d |  | Технический писатель | 120h |  | 620 | 620 |  |
| 22 | 8 | **Создание web - сайта и поддержка** |  | 25d | 2021-06-04 10:05 | 2021-07-12 10:05 |  |  |  | 2021-05-27 11:55 | 2021-07-01 15:55 | 24.38d | 0d |  |  | 248h |  | 2,106 | 2,106 |  |
| 23 | 8.1 | Разработка структуры сайта |  | 1d | 2021-06-04 10:05 | 2021-06-07 10:05 | 21SS |  |  | 2021-05-27 11:55 | 2021-05-28 11:55 | 1d | 0d |  | Web-дизайнер | 8h |  | 106 | 106 |  |
| 24 | 8.2 | Разработка дизайна сайта |  | 1.45w | 2021-06-07 10:05 | 2021-06-17 17:05 | 23 |  |  | 2021-05-28 11:55 | 2021-06-08 16:55 | 1.45w | 0d |  | 3D аниматор; Web-дизайнер; Художник-дизайнер | 120h |  | 1,110 | 1,110 |  |
| 25 | 8.3 | Наполнение сайта |  | 3w | 2021-06-17 17:05 | 2021-07-12 10:05 | 24 |  |  | 2021-06-08 16:55 | 2021-07-01 15:55 | 3w | 0d |  | Web-дизайнер | 120h |  | 890 | 890 |  |
| 26 | 9 | Тестирование сайта |  | 2.52w | 2021-07-05 10:05 | 2021-07-21 15:45 | 22FS-1w |  |  | 2021-06-24 15:55 | 2021-07-13 10:25 | 2.49w | 0d |  | Ведущий программист; Программист#1; Программист#2; Программист#3; Программист#4 | 480h |  | 4,044.63 | 3,940.97 |  |
| 27 | 10 | Сдача сайта в эксплуатацию | milestone | 0w | 2021-07-21 15:45 | 2021-07-21 15:45 | 26 |  |  | 2021-07-13 10:25 | 2021-07-13 10:25 | 0w | 0d |  |  |  |  |  |  |  |

| ID | WBS | Task | Duration | Start | Finish | Complete | Remaining | Baseline start | Baseline finish | Baseline duration | Total slack | Constraint | Resources | Work | Actual work | Cost | Baseline cost | Actual cost |
| --- | --- | --- | --- | --- | --- | --- | --- | --- | --- | --- | --- | --- | --- | --- | --- | --- | --- | --- |
| 28 | 11 | **Совещание** | 86.12d | 2021-03-03 09:00 A | 2021-07-07 10:00 | 47% | 45.33d | 2021-03-03 09:00 | 2021-07-07 10:00 | 86.12d | 10.59d |  |  | 131h | 61h | 1,151 | 1,159 | 531 |
| 29 | 11.1 | Совещание 1 | 1h | 2021-03-03 09:00 A | 2021-03-03 10:00 A | 100% |  | 2021-03-03 09:00 | 2021-03-03 10:00 | 1h |  | start no earlier than 2021-03-03 08:00 | 3D аниматор; Web-дизайнер; Ведущий программист; Мультимедиа-корреспондент; Системный аналитик; Технический писатель; Художник-дизайнер | 7h | 7h | 61 | 61 | 61 |
| 30 | 11.2 | Совещание 2 | 1h | 2021-03-10 09:00 A | 2021-03-10 10:00 A | 100% |  | 2021-03-10 09:00 | 2021-03-10 10:00 | 1h |  | start no earlier than 2021-03-10 08:00 | 3D аниматор; Web-дизайнер; Ведущий программист; Мультимедиа-корреспондент; Системный аналитик; Технический писатель; Художник-дизайнер | 7h | 7h | 61 | 61 | 61 |
| 31 | 11.3 | Совещание 3 | 1h | 2021-03-17 09:00 A | 2021-03-17 10:00 A | 100% |  | 2021-03-17 09:00 | 2021-03-17 10:00 | 1h |  | start no earlier than 2021-03-17 08:00 | 3D аниматор; Web-дизайнер; Ведущий программист; Мультимедиа-корреспондент; Системный аналитик; Технический писатель; Художник-дизайнер | 7h | 7h | 61 | 61 | 61 |
| 32 | 11.4 | Совещание 4 | 1h | 2021-03-24 09:00 A | 2021-03-24 10:00 A | 100% |  | 2021-03-24 09:00 | 2021-03-24 10:00 | 1h |  | start no earlier than 2021-03-24 08:00 | 3D аниматор; Web-дизайнер; Ведущий программист; Мультимедиа-корреспондент; Системный аналитик; Технический писатель; Художник-дизайнер | 7h | 7h | 61 | 61 | 61 |
| 33 | 11.5 | Совещание 5 | 1h | 2021-03-31 09:00 A | 2021-03-31 10:00 A | 100% |  | 2021-03-31 09:00 | 2021-03-31 10:00 | 1h |  | start no earlier than 2021-03-31 08:00 | 3D аниматор; Web-дизайнер; Ведущий программист; Мультимедиа-корреспондент; Системный аналитик; Технический писатель; Художник-дизайнер | 7h | 7h | 61 | 61 | 61 |
| 34 | 11.6 | Совещание 6 | 1h | 2021-04-07 08:00 A | 2021-04-07 10:00 A | 100% |  | 2021-04-07 09:00 | 2021-04-07 10:00 | 1h |  | start no earlier than 2021-04-07 08:00 | 3D аниматор; Web-дизайнер; Ведущий программист; Мультимедиа-корреспондент; Системный аналитик; Технический писатель; Художник-дизайнер | 6h | 6h | 51 | 61 | 51 |
| 35 | 11.7 | Совещание 7 | 1h | 2021-04-14 08:00 A | 2021-04-14 10:00 A | 100% |  | 2021-04-14 09:00 | 2021-04-14 10:00 | 1h |  | start no earlier than 2021-04-14 08:00 | 3D аниматор; Web-дизайнер; Ведущий программист; Мультимедиа-корреспондент; Системный аналитик; Технический писатель; Художник-дизайнер | 6h | 6h | 51 | 61 | 51 |
| 36 | 11.8 | Совещание 8 | 1h | 2021-04-21 09:00 A | 2021-04-21 10:00 A | 100% |  | 2021-04-21 09:00 | 2021-04-21 10:00 | 1h |  | start no earlier than 2021-04-21 08:00 | 3D аниматор; Web-дизайнер; Ведущий программист; Мультимедиа-корреспондент; Системный аналитик; Технический писатель; Художник-дизайнер | 7h | 7h | 62 | 61 | 62 |
| 37 | 11.9 | Совещание 9 | 1h | 2021-04-28 09:00 A | 2021-04-28 10:00 A | 100% |  | 2021-04-28 09:00 | 2021-04-28 10:00 | 1h |  | start no earlier than 2021-04-28 08:00 | 3D аниматор; Web-дизайнер; Ведущий программист; Мультимедиа-корреспондент; Системный аналитик; Технический писатель; Художник-дизайнер | 7h | 7h | 62 | 61 | 62 |
| 38 | 11.10 | Совещание 10 | 1h | 2021-05-05 09:00 | 2021-05-05 10:00 |  |  | 2021-05-05 09:00 | 2021-05-05 10:00 | 1h | 53.59d | start no earlier than 2021-05-05 08:00 | 3D аниматор; Web-дизайнер; Ведущий программист; Мультимедиа-корреспондент; Системный аналитик; Технический писатель; Художник-дизайнер | 7h |  | 62 | 61 |  |
| 39 | 11.11 | Совещание 11 | 1h | 2021-05-12 09:00 | 2021-05-12 10:00 |  |  | 2021-05-12 09:00 | 2021-05-12 10:00 | 1h | 49.59d | start no earlier than 2021-05-12 08:00 | 3D аниматор; Web-дизайнер; Ведущий программист; Мультимедиа-корреспондент; Системный аналитик; Технический писатель; Художник-дизайнер | 7h |  | 62 | 61 |  |
| 40 | 11.12 | Совещание 12 | 1h | 2021-05-19 09:00 | 2021-05-19 10:00 |  |  | 2021-05-19 09:00 | 2021-05-19 10:00 | 1h | 44.59d | start no earlier than 2021-05-19 08:00 | 3D аниматор; Web-дизайнер; Ведущий программист; Мультимедиа-корреспондент; Системный аналитик; Технический писатель; Художник-дизайнер | 7h |  | 62 | 61 |  |
| 41 | 11.13 | Совещание 13 | 1h | 2021-05-26 09:00 | 2021-05-26 10:00 |  |  | 2021-05-26 09:00 | 2021-05-26 10:00 | 1h | 39.59d | start no earlier than 2021-05-26 08:00 | 3D аниматор; Web-дизайнер; Ведущий программист; Мультимедиа-корреспондент; Системный аналитик; Технический писатель; Художник-дизайнер | 7h |  | 62 | 61 |  |
| 42 | 11.14 | Совещание 14 | 1h | 2021-06-02 09:00 | 2021-06-02 10:00 |  |  | 2021-06-02 09:00 | 2021-06-02 10:00 | 1h | 34.59d | start no earlier than 2021-06-02 08:00 | 3D аниматор; Web-дизайнер; Ведущий программист; Мультимедиа-корреспондент; Системный аналитик; Технический писатель; Художник-дизайнер | 7h |  | 62 | 61 |  |
| 43 | 11.15 | Совещание 15 | 1h | 2021-06-09 09:00 | 2021-06-09 10:00 |  |  | 2021-06-09 09:00 | 2021-06-09 10:00 | 1h | 29.59d | start no earlier than 2021-06-09 08:00 | 3D аниматор; Web-дизайнер; Ведущий программист; Мультимедиа-корреспондент; Системный аналитик; Технический писатель; Художник-дизайнер | 7h |  | 62 | 61 |  |
| 44 | 11.16 | Совещание 16 | 1h | 2021-06-16 09:00 | 2021-06-16 10:00 |  |  | 2021-06-16 09:00 | 2021-06-16 10:00 | 1h | 25.59d | start no earlier than 2021-06-16 08:00 | 3D аниматор; Web-дизайнер; Ведущий программист; Мультимедиа-корреспондент; Системный аналитик; Технический писатель; Художник-дизайнер | 7h |  | 62 | 61 |  |
| 45 | 11.17 | Совещание 17 | 1h | 2021-06-23 09:00 | 2021-06-23 10:00 |  |  | 2021-06-23 09:00 | 2021-06-23 10:00 | 1h | 20.59d | start no earlier than 2021-06-23 08:00 | 3D аниматор; Web-дизайнер; Ведущий программист; Мультимедиа-корреспондент; Системный аналитик; Технический писатель; Художник-дизайнер | 7h |  | 62 | 61 |  |
| 46 | 11.18 | Совещание 18 | 1h | 2021-06-30 09:00 | 2021-06-30 10:00 |  |  | 2021-06-30 09:00 | 2021-06-30 10:00 | 1h | 15.59d | start no earlier than 2021-06-30 08:00 | 3D аниматор; Web-дизайнер; Ведущий программист; Мультимедиа-корреспондент; Системный аналитик; Технический писатель; Художник-дизайнер | 7h |  | 62 | 61 |  |
| 47 | 11.19 | Совещание 19 | 1h | 2021-07-07 09:00 | 2021-07-07 10:00 |  |  | 2021-07-07 09:00 | 2021-07-07 10:00 | 1h | 10.59d | start no earlier than 2021-07-07 08:00 | 3D аниматор; Web-дизайнер; Ведущий программист; Мультимедиа-корреспондент; Системный аналитик; Технический писатель; Художник-дизайнер | 7h |  | 62 | 61 |  |
