# RK

Schedule from MS Project, 2021-04-05 to 2021-07-20, status date 2021-05-28, costs in ₽, A marks actual dates.

## Calendars

- Стандартный: Mon-Fri 09:00-13:00, 14:00-18:00; Sat-Sun off. Exceptions (off unless hours are given): 2021-05-03 (Майские каникулы), 2021-05-09 to 2021-05-10 (День победы), 2021-06-12 to 2021-06-14 (День России).

## Resources

| Resource | Group | Unit | Rate | Cost per use |
| --- | --- | --- | --- | --- |
| Аналитик |  |  | 500 | 5000 |
| Ведущий программист | Программисты |  | 437.5 | 3000 |
| Программист 1 | Программисты |  | 312.5 | 2000 |
| Программист 2 | Программисты |  | 312.5 | 2000 |
| Программист 3 | Программисты |  | 312.5 | 2000 |
| Технический писатель |  |  | 250 | 1500 |
| Наборщик данных | Технический персонал |  | 218.75 | 1000 |
| Сервер базы данных | Оборудование |  | 25000 | 10000 |
| Картиджы для принтера | Расходные материалы | шт | 2500 |  |
| Бумага | Расходные материалы | пач. | 200 |  |
| Специалист обслуживания |  |  | 3000 |  |
| Программист 4 | Программист |  | 312.5 | 2000 |

## Schedule

| ID | WBS | Task | Type | Duration | Start | Finish | Predecessors | Complete | Remaining | Baseline start | Baseline finish | Baseline duration | Total slack | Free slack | Constraint | Resources | Work | Actual work | Cost | Baseline cost | Actual cost |
| --- | --- | --- | --- | --- | --- | --- | --- | --- | --- | --- | --- | --- | --- | --- | --- | --- | --- | --- | --- | --- | --- |
| 1 | 1 | **Рубежный контроль** |  | 73.38d | 2021-04-05 09:00 A | 2021-07-20 12:00 |  | 49% | 37.78d | 2021-04-05 09:00 | 2021-07-20 12:00 | 73.38d | 0d |  |  |  | 1336h | 889.65h | 553,066.88 | 550,566.88 | 390,160.62 |
| 2 | 1.1 | Начало реализации проекта | milestone | 0d | 2021-04-05 09:00 A | 2021-04-05 09:00 A |  | 100% |  | 2021-04-05 09:00 | 2021-04-05 09:00 | 0d |  |  |  |  |  |  |  |  |  |
| 3 | 1.2 | **Программирование** |  | 34.18d | 2021-04-06 09:00 A | 2021-05-26 10:28 |  | 89% | 3.74d | 2021-04-06 09:00 | 2021-05-26 10:28 | 34.18d | 38.19d |  |  | Сервер базы данных | 816h | 774.6h | 348,866.88 | 348,866.88 | 333,645.62 |
| 4 | 1.2.1 | Постановка задачи |  | 5d | 2021-04-06 09:00 A | 2021-04-12 18:00 | 2FS+1d | 70% | 1.5d | 2021-04-06 09:00 | 2021-04-12 18:00 | 5d | 67.38d |  |  | Аналитик; Ведущий программист | 80h | 56h | 45,500 | 45,500 | 34,250 |
| 5 | 1.2.2 | Разработка интерфейса |  | 4d | 2021-04-13 09:00 A | 2021-04-16 18:00 A | 4 | 100% |  | 2021-04-13 09:00 | 2021-04-16 18:00 | 4d |  |  |  | Ведущий программист; Программист 1; Программист 2; Программист 3; Программист 4 | 160h | 160h | 65,000 | 65,000 | 65,000 |
| 6 | 1.2.3 | Разработка модулей обработки данных |  | 7.65d | 2021-04-19 12:00 A | 2021-05-07 17:28 A | 5 | 100% |  | 2021-04-19 12:00 | 2021-05-07 17:28 | 7.65d |  |  |  | Программист 2; Программист 3; Программист 4; Программист 1 | 240h | 240h | 83,000 | 83,000 | 83,000 |
| 7 | 1.2.4 | Разработка базы данных |  | 7.62d | 2021-04-27 12:00 A | 2021-05-07 18:00 A | 4 | 100% |  | 2021-04-27 12:00 | 2021-05-06 12:28 | 6.06d |  |  |  | Аналитик; Программист 1; Программист 4; Программист 2; Программист 3 | 240h | 240h | 96,866.88 | 96,866.88 | 96,866.88 |
| 8 | 1.2.5 | Заполнение базы данных |  | 12.75d | 2021-05-06 12:28 A | 2021-05-26 10:28 | 7 | 80% | 2.55d | 2021-05-06 12:28 | 2021-05-26 10:28 | 12.75d | 38.19d |  |  | Наборщик данных | 96h | 78.6h | 22,000 | 22,000 | 18,193.75 |
| 9 | 1.3 | Программирование завершено | milestone | 0d | 2021-05-26 10:28 A | 2021-05-26 10:28 A | 6, 8 | 100% |  | 2021-05-26 10:28 | 2021-05-26 10:28 | 0d |  |  |  |  |  |  |  |  |  |
| 10 | 1.4 | **Тестирование и отладка** |  | 21d | 2021-05-19 10:28 A | 2021-06-18 10:28 |  | 37% | 13.18d | 2021-05-19 10:28 | 2021-06-18 10:28 | 21d | 22.19d |  |  |  | 320h | 115.05h | 125,000 | 125,000 | 47,515 |
| 11 | 1.4.1 | Подготовка тестовых наборов данных |  | 5.62d | 2021-05-19 10:28 A | 2021-05-26 16:28 A | 9FS-5d | 100% |  | 2021-05-19 10:28 | 2021-05-26 16:28 | 5.62d |  |  |  | Программист 1; Программист 3 | 80h | 80h | 29,000 | 29,000 | 29,000 |
| 12 | 1.4.2 | Тестирование и исправление ошибок |  | 15.38d | 2021-05-26 16:28 A | 2021-06-18 10:28 | 11 | 14% | 13.18d | 2021-05-26 16:28 | 2021-06-18 10:28 | 15.38d | 22.19d | 0d |  | Ведущий программист; Программист 2 | 240h | 35.05h | 95,000 | 95,000 | 18,145 |
| 13 | 1.5 | Отладка завершена | milestone | 0d | 2021-06-18 10:28 | 2021-06-18 10:28 | 12 |  |  | 2021-06-18 10:28 | 2021-06-18 10:28 | 0d | 22.19d |  |  |  |  |  |  |  |  |
| 14 | 1.6 | **Разработка документации** |  | 25.75d | 2021-06-09 10:28 | 2021-07-15 17:28 |  |  |  | 2021-06-09 10:28 | 2021-07-15 17:28 | 25.75d | 2.44d |  |  | Бумага [1 пач.]; Картиджы для принтера [2 шт] | 200h |  | 58,200 | 55,700 |  |
| 15 | 1.6.1 | Составление программной документации |  | 10.38d | 2021-06-09 10:28 | 2021-06-24 14:28 | 9SS+10d |  |  | 2021-06-09 10:28 | 2021-06-24 14:28 | 10.38d | 2.44d | 0d |  | Технический писатель | 80h |  | 21,500 | 21,500 |  |
| 16 | 1.6.2 | Составление пользовательской документации |  | 15.38d | 2021-06-24 14:28 | 2021-07-15 17:28 | 15 |  |  | 2021-06-24 14:28 | 2021-07-15 17:28 | 15.38d | 2.44d | 0d |  | Технический писатель | 120h |  | 31,500 | 31,500 |  |
| 17 | 1.7 | **Профилактика оборудования** |  | 57.38d | 2021-04-27 09:00 A | 2021-07-20 12:00 |  | 43% | 32.79d | 2021-04-27 09:00 | 2021-07-20 12:00 | 57.38d | 0d |  |  |  |  |  | 21,000 | 21,000 | 9,000 |
| 18 | 1.7.1 | Профилактика оборудования 1 | manual | 3h | 2021-04-27 09:00 A | 2021-04-27 12:00 A |  | 100% |  | 2021-04-27 09:00 | 2021-04-27 12:00 | 3h |  |  | start no earlier than 2021-04-27 09:00 | Специалист обслуживания |  |  | 3,000 | 3,000 | 3,000 |
| 19 | 1.7.2 | Профилактика оборудования 2 | manual | 3h | 2021-05-11 09:00 A | 2021-05-11 12:00 A |  | 100% |  | 2021-05-11 09:00 | 2021-05-11 12:00 | 3h |  |  | start no earlier than 2021-05-11 09:00 | Специалист обслуживания |  |  | 3,000 | 3,000 | 3,000 |
| 20 | 1.7.3 | Профилактика оборудования 3 | manual | 3h | 2021-05-25 09:00 A | 2021-05-25 12:00 A |  | 100% |  | 2021-05-25 09:00 | 2021-05-25 12:00 | 3h |  |  | start no earlier than 2021-05-25 09:00 | Специалист обслуживания |  |  | 3,000 | 3,000 | 3,000 |
| 21 | 1.7.4 | Профилактика оборудования 4 | manual | 3h | 2021-06-08 09:00 | 2021-06-08 12:00 |  |  |  | 2021-06-08 09:00 | 2021-06-08 12:00 | 3h |  |  | start no earlier than 2021-06-08 09:00 | Специалист обслуживания |  |  | 3,000 | 3,000 |  |
| 22 | 1.7.5 | Профилактика оборудования 5 | manual | 3h | 2021-06-22 09:00 | 2021-06-22 12:00 |  |  |  | 2021-06-22 09:00 | 2021-06-22 12:00 | 3h |  |  | start no earlier than 2021-06-22 09:00 | Специалист обслуживания |  |  | 3,000 | 3,000 |  |
| 23 | 1.7.6 | Профилактика оборудования 6 | manual | 3h | 2021-07-06 09:00 | 2021-07-06 12:00 |  |  |  | 2021-07-06 09:00 | 2021-07-06 12:00 | 3h |  |  | start no earlier than 2021-07-06 09:00 | Специалист обслуживания |  |  | 3,000 | 3,000 |  |
| 24 | 1.7.7 | Профилактика оборудования 7 | manual | 3h | 2021-07-20 09:00 | 2021-07-20 12:00 |  |  |  | 2021-07-20 09:00 | 2021-07-20 12:00 | 3h |  |  | start no earlier than 2021-07-20 09:00 | Специалист обслуживания |  |  | 3,000 | 3,000 |  |
| 25 | 1.7.8 | Конец проекта | milestone | 0d | 2021-07-15 17:28 | 2021-07-15 17:28 | 16 |  |  | 2021-07-15 17:28 | 2021-07-15 17:28 | 0d | 2.44d |  |  | Специалист обслуживания |  |  |  |  |  |
